# 项目规划

Schedule from MS Project, 2020-11-05 to 2020-12-16, costs in ¥.
China

## Calendars

- 标准: Mon-Fri 08:00-12:00, 13:00-17:00; Sat-Sun off. Exceptions (off unless hours are given): 2020-11-15 08:00-12:00, 13:00-17:00, 2020-12-13 08:00-12:00, 13:00-17:00.

## Resources

| Resource | Rate | Cost per use |
| --- | --- | --- |
| 项目经理梁微 | 100 |  |
| UI专家杨秦晋 | 80 |  |
| 质量专家汪燕 | 80 |  |
| 设计专家熊子威 | 80 |  |
| 需求专家周心羽 | 80 |  |
| 测试员周心羽 | 50 |  |
| 测试员申毅扬 | 50 |  |
| 程序员熊子威 | 70 |  |
| 程序员盛斌 | 70 |  |
| 程序员汪燕 | 70 |  |
| 程序员杨秦晋 | 70 |  |
| 团队建设费 |  |  |
| 测试货物 | 10 | 10 |
| 间接成本 |  |  |
| 储备资金 |  |  |

## Schedule

| ID | WBS | Task | Type | Duration | Start | Finish | Predecessors | Resources | Work | Cost |
| --- | --- | --- | --- | --- | --- | --- | --- | --- | --- | --- |
| 1 | 1 | **ShopXO商城网站** |  | 32d | 2020-11-05 | 2020-12-16 |  |  | 1832h | 142,880 |
| 2 | 1.1 | **1 启动** |  | 3d | 2020-11-05 | 2020-11-07 |  | 间接成本 [0.1%] | 64h | 5,760 |
| 3 | 1.1.1 | 组建核心团队 | manual | 1d | 2020-11-05 | 2020-11-05 |  | 项目经理梁微; UI专家杨秦晋; 质量专家汪燕; 设计专家熊子威; 需求专家周心羽 | 40h | 3,360 |
| 4 | 1.1.2 | 干系人分析 | manual | 1d | 2020-11-05 | 2020-11-05 |  | 项目经理梁微 | 8h | 800 |
| 5 | 1.1.3 | 里程碑计划 | manual | 1d | 2020-11-05 | 2020-11-05 |  | 项目经理梁微 | 8h | 800 |
| 6 | 1.1.4 | 制定项目章程 | manual | 1d | 2020-11-06 | 2020-11-06 | 3, 4, 5 | 项目经理梁微 | 8h | 800 |
| 7 | 1.1.5 | 项目启动大会 | milestone, manual | 0d | 2020-11-06 | 2020-11-06 | 6 | 项目经理梁微; 需求专家周心羽; UI专家杨秦晋; 设计专家熊子威; 质量专家汪燕 |  |  |
| 8 | 1.2 | **2 规划** |  | 17d | 2020-11-07 | 2020-11-27 |  | 间接成本 [0.1%] | 328h | 31,040 |
| 9 | 1.2.1 | **2.1 规划范围** |  | 4d | 2020-11-09 | 2020-11-12 |  | 间接成本 [0.1%] | 48h | 4,320 |
| 10 | 1.2.1.1 | 制定需求说明书 | manual | 1d | 2020-11-09 | 2020-11-09 |  | 需求专家周心羽 | 8h | 640 |
| 11 | 1.2.1.2 | 界面设计 | manual | 1d | 2020-11-10 | 2020-11-10 | 10 | UI专家杨秦晋 | 8h | 640 |
| 12 | 1.2.1.3 | 详细设计说明书 | manual | 1d | 2020-11-10 | 2020-11-10 | 10 | 设计专家熊子威 | 8h | 640 |
| 13 | 1.2.1.4 | 项目范围说明书 | manual | 1d | 2020-11-10 | 2020-11-10 | 10 | 项目经理梁微 | 8h | 800 |
| 14 | 1.2.1.5 | 创建WBS | manual | 1d | 2020-11-11 | 2020-11-11 | 11, 12, 13 | 项目经理梁微 | 8h | 800 |
| 15 | 1.2.1.6 | 形成范围基准 | manual | 1d | 2020-11-12 | 2020-11-12 | 14 | 项目经理梁微 | 8h | 800 |
| 16 | 1.2.2 | **2.2 规划时间** |  | 5d | 2020-11-15 | 2020-11-19 |  | 间接成本 [0.1%] | 48h | 4,800 |
| 17 | 1.2.2.1 | 排列工作包顺序 | manual | 1d | 2020-11-15 | 2020-11-15 |  | 项目经理梁微 | 8h | 800 |
| 18 | 1.2.2.2 | 估算资源 | manual | 2d | 2020-11-16 | 2020-11-17 | 17 | 项目经理梁微 | 16h | 1,600 |
| 19 | 1.2.2.3 | 估算持续时间 | manual | 1d | 2020-11-18 | 2020-11-18 | 18 | 项目经理梁微 | 8h | 800 |
| 20 | 1.2.2.4 | 制定进度计划 | manual | 1d | 2020-11-18 | 2020-11-18 | 18 | 项目经理梁微 | 8h | 800 |
| 21 | 1.2.2.5 | 形成进度基准 | manual | 1d | 2020-11-19 | 2020-11-19 | 20 | 项目经理梁微 | 8h | 800 |
| 22 | 1.2.3 | **2.3 规划成本** |  | 2d | 2020-11-21 | 2020-11-23 |  | 间接成本 [0.1%] | 40h | 4,000 |
| 23 | 1.2.3.1 | 项目成本估算 | manual | 2d | 2020-11-21 | 2020-11-23 |  | 项目经理梁微 | 16h | 1,600 |
| 24 | 1.2.3.2 | 项目预算 | manual | 2d | 2020-11-22 | 2020-11-23 |  | 项目经理梁微 | 16h | 1,600 |
| 25 | 1.2.3.3 | 形成范围基准 | manual | 1d | 2020-11-23 | 2020-11-23 |  | 项目经理梁微 | 8h | 800 |

| ID | WBS | Task | Type | Duration | Start | Finish | Predecessors | Resources | Work | Cost |
| --- | --- | --- | --- | --- | --- | --- | --- | --- | --- | --- |
| 26 | 1.2.4 | **2.4 规划质量** |  | 7d | 2020-11-15 | 2020-11-22 |  | 间接成本 [0.1%] | 64h | 5,120 |
| 27 | 1.2.4.1 | 制定测试计划 | manual | 2d | 2020-11-15 | 2020-11-16 |  | 质量专家汪燕 | 16h | 1,280 |
| 28 | 1.2.4.2 | 制定测试用例 | manual | 6d | 2020-11-16 | 2020-11-22 |  | 质量专家汪燕 | 48h | 3,840 |
| 29 | 1.2.5 | **2.5 制定人力资源** |  | 3d | 2020-11-17 | 2020-11-19 |  | 间接成本 [0.1%] | 32h | 3,200 |
| 30 | 1.2.5.1 | 制定人力资源计划 | manual | 2d | 2020-11-17 | 2020-11-18 |  | 项目经理梁微 | 16h | 1,600 |
| 31 | 1.2.5.2 | 制定人员配备管理计划 | manual | 2d | 2020-11-18 | 2020-11-19 |  | 项目经理梁微 | 16h | 1,600 |
| 32 | 1.2.6 | **2.6 规划沟通** |  | 2d | 2020-11-19 | 2020-11-20 |  | 间接成本 [0.1%] | 16h | 1,600 |
| 33 | 1.2.6.1 | 制定沟通管理计划 | manual | 2d | 2020-11-19 | 2020-11-20 |  | 项目经理梁微 | 16h | 1,600 |
| 34 | 1.2.7 | **2.7 规划采购** |  | 5d | 2020-11-17 | 2020-11-22 |  | 间接成本 [0.1%] | 48h | 4,800 |
| 35 | 1.2.7.1 | 自制外购分析 | manual | 2d | 2020-11-17 | 2020-11-18 |  | 项目经理梁微 | 16h | 1,600 |
| 36 | 1.2.7.2 | 制定采购文件 | manual | 4d | 2020-11-18 | 2020-11-22 |  | 项目经理梁微 | 32h | 3,200 |
| 37 | 1.2.8 | **2.8 规划风险** |  | 4d | 2020-11-23 | 2020-11-26 |  | 间接成本 [0.1%] | 24h | 2,400 |
| 38 | 1.2.8.1 | 识别风险 | manual | 1d | 2020-11-23 | 2020-11-23 |  | 项目经理梁微 | 8h | 800 |
| 39 | 1.2.8.2 | 风险分析 | manual | 1d | 2020-11-24 | 2020-11-24 | 38 | 项目经理梁微 | 8h | 800 |
| 40 | 1.2.8.3 | 制定风险登记册 | manual | 1d | 2020-11-25 | 2020-11-25 | 39 | 项目经理梁微 | 8h | 800 |
| 41 | 1.2.9 | 规划整合 | manual | 1d | 2020-11-26 | 2020-11-26 | 40 | 项目经理梁微 | 8h | 800 |
| 42 | 1.3 | **3 执行与监控** |  | 21d | 2020-11-17 | 2020-12-14 |  | 间接成本 [0.1%] | 1264h | 92,160 |
| 43 | 1.3.1 | 组建项目团队 | manual | 3d | 2020-11-17 | 2020-11-19 |  | 项目经理梁微; 测试员周心羽; 测试员申毅扬; 程序员熊子威; 程序员盛斌; 程序员汪燕; 程序员杨秦晋 | 168h | 11,520 |
| 44 | 1.3.2 | **3.1 项目执行** |  | 9d | 2020-11-19 | 2020-12-01 |  | 间接成本 [0.1%] | 224h | 15,680 |
| 45 | 1.3.2.1 | **3.1.1 手机管理模块** |  | 3d | 2020-11-19 | 2020-11-22 |  | 间接成本 [0.1%] | 88h | 6,160 |
| 46 | 1.3.2.1.1 | 基础配置 | manual | 3d | 2020-11-19 | 2020-11-21 |  | 程序员熊子威 | 24h | 1,680 |
| 47 | 1.3.2.1.2 | 首页导航 | manual | 2d | 2020-11-20 | 2020-11-22 |  | 程序员熊子威 | 16h | 1,120 |
| 48 | 1.3.2.1.3 | 用户中心导航 | manual | 2d | 2020-11-20 | 2020-11-22 |  | 程序员熊子威 | 16h | 1,120 |
| 49 | 1.3.2.1.4 | 小程序列表 | manual | 2d | 2020-11-20 | 2020-11-22 |  | 程序员熊子威 | 16h | 1,120 |
| 50 | 1.3.2.1.5 | 小程序配置 | manual | 2d | 2020-11-20 | 2020-11-22 |  | 程序员熊子威 | 16h | 1,120 |

| ID | WBS | Task | Type | Duration | Start | Finish | Predecessors | Resources | Work | Cost |
| --- | --- | --- | --- | --- | --- | --- | --- | --- | --- | --- |
| 51 | 1.3.2.2 | **3.1.2 仓库管理模块** |  | 2d | 2020-11-23 | 2020-11-24 |  | 间接成本 [0.1%] | 32h | 2,240 |
| 52 | 1.3.2.2.1 | 仓库管理 | manual | 2d | 2020-11-19 | 2020-11-20 |  | 程序员盛斌 | 16h | 1,120 |
| 53 | 1.3.2.2.2 | 仓库商品管理管理 | manual | 2d | 2020-11-20 | 2020-11-22 |  | 程序员盛斌 | 16h | 1,120 |
| 54 | 1.3.2.3 | **3.1.3 品牌管理模块** |  | 3d | 2020-11-25 | 2020-11-27 |  | 间接成本 [0.1%] | 32h | 2,240 |
| 55 | 1.3.2.3.1 | 品牌管理 | manual | 2d | 2020-11-25 | 2020-11-26 |  | 程序员汪燕 | 16h | 1,120 |
| 56 | 1.3.2.3.2 | 品牌分类 | manual | 2d | 2020-11-26 | 2020-11-27 |  | 程序员汪燕 | 16h | 1,120 |
| 57 | 1.3.2.4 | **3.1.4 网站管理模块** |  | 3d | 2020-11-28 | 2020-12-01 |  | 间接成本 [0.1%] | 72h | 5,040 |
| 58 | 1.3.2.4.1 | 导航管理+自定义页面 | manual | 2d | 2020-11-28 | 2020-11-30 |  | 程序员杨秦晋 | 16h | 1,120 |
| 59 | 1.3.2.4.2 | 友情链接+主题管理 | manual | 2d | 2020-11-28 | 2020-11-30 |  | 程序员杨秦晋 | 16h | 1,120 |
| 60 | 1.3.2.4.3 | 首页轮播+筛选价格 | manual | 2d | 2020-11-28 | 2020-11-30 |  | 程序员杨秦晋 | 16h | 1,120 |
| 61 | 1.3.2.4.4 | 地区管理+快递管理+支付方法 | manual | 3d | 2020-11-28 | 2020-12-01 |  | 程序员杨秦晋 | 24h | 1,680 |
| 62 | 1.3.3 | **3.2 项目监控** |  | 8d | 2020-12-02 | 2020-12-11 |  | 间接成本 [0.1%] | 408h | 30,560 |
| 63 | 1.3.3.1 | 各项指标监控 | manual | 2d | 2020-12-02 | 2020-12-03 |  | 测试员周心羽; 测试员申毅扬; 项目经理梁微 | 48h | 3,200 |
| 64 | 1.3.3.2 | 监控评审 | manual | 2d | 2020-12-04 | 2020-12-07 | 63 | 设计专家熊子威; 项目经理梁微; 需求专家周心羽; 质量专家汪燕 | 64h | 5,440 |
| 65 | 1.3.3.3 | 变更评审 | manual | 1d | 2020-12-08 | 2020-12-08 | 64 | 设计专家熊子威; 项目经理梁微; 需求专家周心羽; 质量专家汪燕 | 32h | 2,720 |
| 66 | 1.3.3.4 | 变更例会 | manual | 3d | 2020-12-09 | 2020-12-11 | 43 | UI专家杨秦晋; 测试员周心羽; 测试员申毅扬; 程序员熊子威; 程序员盛斌; 程序员汪燕; 程序员杨秦晋; 设计专家熊子威; 项目经理梁微; 需求专家周心羽; 质量专家汪燕 | 264h | 19,200 |
| 67 | 1.3.4 | **3.3 管理干系人** |  | 1d | 2020-12-12 | 2020-12-12 |  | 间接成本 [0.1%] | 24h | 2,400 |
| 68 | 1.3.4.1 | 发布项目信息 | manual | 1d | 2020-12-12 | 2020-12-12 | 43 | 项目经理梁微 | 8h | 800 |
| 69 | 1.3.4.2 | 报告监控信息 | manual | 1d | 2020-12-12 | 2020-12-12 | 43 | 项目经理梁微 | 8h | 800 |
| 70 | 1.3.4.3 | 干系人沟通 | manual | 1d | 2020-12-12 | 2020-12-12 | 43 | 项目经理梁微 | 8h | 800 |
| 71 | 1.3.5 | **3.4 团队建设** |  | 1d | 2020-12-13 | 2020-12-14 |  | 间接成本 [0.1%] | 440h | 32,000 |
| 72 | 1.3.5.1 | 培训 | manual | 1d | 2020-12-13 | 2020-12-13 | 43 | UI专家杨秦晋; 测试员周心羽; 测试员申毅扬; 程序员熊子威; 程序员盛斌; 程序员汪燕; 程序员杨秦晋; 设计专家熊子威; 项目经理梁微; 需求专家周心羽; 质量专家汪燕 | 88h | 6,400 |
| 73 | 1.3.5.2 | 娱乐活动 | manual | 2d | 2020-12-13 | 2020-12-14 | 43 | UI专家杨秦晋; 测试员周心羽; 测试员申毅扬; 程序员熊子威; 程序员盛斌; 程序员汪燕; 程序员杨秦晋; 设计专家熊子威; 项目经理梁微; 需求专家周心羽; 质量专家汪燕 | 176h | 12,800 |
| 74 | 1.3.5.3 | 沟通 | manual | 2d | 2020-12-13 | 2020-12-14 | 43 | UI专家杨秦晋; 测试员周心羽; 测试员申毅扬; 程序员熊子威; 程序员盛斌; 程序员汪燕; 程序员杨秦晋; 设计专家熊子威; 项目经理梁微; 需求专家周心羽; 质量专家汪燕 | 176h | 12,800 |
| 75 | 1.4 | 采购 | milestone, manual | 0d | 2020-12-14 | 2020-12-14 | 43 | 项目经理梁微 |  |  |
| 76 | 1.5 | 项目验收 | manual | 1d | 2020-12-14 | 2020-12-14 | 43 | UI专家杨秦晋; 设计专家熊子威; 项目经理梁微; 需求专家周心羽; 质量专家汪燕 | 40h | 3,360 |

| ID | WBS | Task | Type | Duration | Start | Finish | Predecessors | Resources | Work | Cost |
| --- | --- | --- | --- | --- | --- | --- | --- | --- | --- | --- |
| 77 | 1.6 | **4 收尾** |  | 1d | 2020-12-16 | 2020-12-16 |  | 间接成本 [0.1%] | 136h | 10,560 |
| 78 | 1.6.1 | 项目终验 | manual | 1d | 2020-12-16 | 2020-12-16 | 76 | UI专家杨秦晋; 设计专家熊子威; 项目经理梁微; 需求专家周心羽; 质量专家汪燕 | 40h | 3,360 |
| 79 | 1.6.2 | 结束采购 | manual | 1d | 2020-12-16 | 2020-12-16 | 76 | 项目经理梁微 | 8h | 800 |
| 80 | 1.6.3 | 项目内部收尾 | manual | 1d | 2020-12-16 | 2020-12-16 | 76 | UI专家杨秦晋; 测试员周心羽; 测试员申毅扬; 程序员熊子威; 程序员盛斌; 程序员汪燕; 程序员杨秦晋; 设计专家熊子威; 项目经理梁微; 需求专家周心羽; 质量专家汪燕 | 88h | 6,400 |
