# 项目规划

Schedule from MS Project, 2020-11-05 to 2020-12-16, costs in ¥.
China

## Calendars

- 标准: Mon-Fri 08:00-12:00, 13:00-17:00; Sat-Sun off. Exceptions (off unless hours are given): 2020-11-15 08:00-12:00, 13:00-17:00, 2020-12-13 08:00-12:00, 13:00-17:00.

## Resources

| Resource | Rate | Cost per use |
| --- | --- | --- |
| 项目经理 | 100 |  |
| UI专家 | 80 |  |
| 质量专家 | 80 |  |
| 设计专家 | 80 |  |
| 需求专家 | 80 |  |
| 测试员汪燕 | 50 |  |
| 测试员梁微 | 50 |  |
| 程序员申毅扬 | 80 |  |
| 程序员周心羽 | 80 |  |
| 程序员盛斌 | 80 |  |
| 程序员杨秦晋 | 80 |  |
| 团队建设费 |  |  |
| 测试货物 | 10 | 10 |
| 间接成本 |  |  |
| 储备资金 |  |  |

## Schedule

| ID | WBS | Task | Type | Duration | Start | Finish | Predecessors | Resources | Work | Cost |
| --- | --- | --- | --- | --- | --- | --- | --- | --- | --- | --- |
| 1 | 1 | **ShopXO商城网站** |  | 32d | 2020-11-05 | 2020-12-16 |  | 储备资金 [0.1%] | 1768h | 174,768 |
| 2 | 1.1 | **启动** |  | 3d | 2020-11-05 | 2020-11-07 |  | 间接成本 [0.1%] | 64h | 6,336 |
| 3 | 1.1.1 | 组建核心团队 | manual | 1d | 2020-11-05 | 2020-11-05 |  | 项目经理; UI专家; 质量专家; 设计专家; 需求专家 | 40h | 3,360 |
| 4 | 1.1.2 | 干系人分析 | manual | 1d | 2020-11-05 | 2020-11-05 |  | 项目经理 | 8h | 800 |
| 5 | 1.1.3 | 里程碑计划 | manual | 1d | 2020-11-05 | 2020-11-05 |  | 项目经理 | 8h | 800 |
| 6 | 1.1.4 | 制定项目章程 | manual | 1d | 2020-11-06 | 2020-11-06 | 3, 4, 5 | 项目经理 | 8h | 800 |
| 7 | 1.1.5 | 项目启动大会 | milestone, manual | 0d | 2020-11-06 | 2020-11-06 | 6 | 项目经理; 需求专家; UI专家; 设计专家; 质量专家 |  |  |
| 8 | 1.2 | **规划** |  | 17d | 2020-11-07 | 2020-11-27 |  | 间接成本 [0.1%] | 328h | 34,144 |
| 9 | 1.2.1 | **规划范围** |  | 4d | 2020-11-09 | 2020-11-12 |  |  | 48h | 4,320 |
| 10 | 1.2.1.1 | 制定需求说明书 | manual | 1d | 2020-11-09 | 2020-11-09 |  | 需求专家 | 8h | 640 |
| 11 | 1.2.1.2 | 界面设计 | manual | 1d | 2020-11-10 | 2020-11-10 | 10 | UI专家 | 8h | 640 |
| 12 | 1.2.1.3 | 详细设计说明书 | manual | 1d | 2020-11-10 | 2020-11-10 | 10 | 设计专家 | 8h | 640 |
| 13 | 1.2.1.4 | 项目范围说明书 | manual | 1d | 2020-11-10 | 2020-11-10 | 10 | 项目经理 | 8h | 800 |
| 14 | 1.2.1.5 | 创建WBS | manual | 1d | 2020-11-11 | 2020-11-11 | 11, 12, 13 | 项目经理 | 8h | 800 |
| 15 | 1.2.1.6 | 形成范围基准 | manual | 1d | 2020-11-12 | 2020-11-12 | 14 | 项目经理 | 8h | 800 |
| 16 | 1.2.2 | **规划时间** |  | 5d | 2020-11-15 | 2020-11-19 |  |  | 48h | 4,800 |
| 17 | 1.2.2.1 | 排列工作包顺序 | manual | 1d | 2020-11-15 | 2020-11-15 |  | 项目经理 | 8h | 800 |
| 18 | 1.2.2.2 | 估算资源 | manual | 2d | 2020-11-16 | 2020-11-17 | 17 | 项目经理 | 16h | 1,600 |
| 19 | 1.2.2.3 | 估算持续时间 | manual | 1d | 2020-11-18 | 2020-11-18 | 18 | 项目经理 | 8h | 800 |
| 20 | 1.2.2.4 | 制定进度计划 | manual | 1d | 2020-11-18 | 2020-11-18 | 18 | 项目经理 | 8h | 800 |
| 21 | 1.2.2.5 | 形成进度基准 | manual | 1d | 2020-11-19 | 2020-11-19 | 20 | 项目经理 | 8h | 800 |
| 22 | 1.2.3 | **规划成本** |  | 2d | 2020-11-21 | 2020-11-23 |  |  | 40h | 4,000 |
| 23 | 1.2.3.1 | 项目成本估算 | manual | 2d | 2020-11-21 | 2020-11-23 |  | 项目经理 | 16h | 1,600 |
| 24 | 1.2.3.2 | 项目预算 | manual | 2d | 2020-11-22 | 2020-11-23 |  | 项目经理 | 16h | 1,600 |
| 25 | 1.2.3.3 | 形成范围基准 | manual | 1d | 2020-11-23 | 2020-11-23 |  | 项目经理 | 8h | 800 |

| ID | WBS | Task | Type | Duration | Start | Finish | Predecessors | Total slack | Resources | Work | Cost |
| --- | --- | --- | --- | --- | --- | --- | --- | --- | --- | --- | --- |
| 26 | 1.2.4 | **规划质量** |  | 7d | 2020-11-15 | 2020-11-22 |  |  |  | 64h | 5,120 |
| 27 | 1.2.4.1 | 制定测试计划 | manual | 2d | 2020-11-15 | 2020-11-16 |  |  | 质量专家 | 16h | 1,280 |
| 28 | 1.2.4.2 | 制定测试用例 | manual | 6d | 2020-11-16 | 2020-11-22 |  |  | 质量专家 | 48h | 3,840 |
| 29 | 1.2.5 | **制定人力资源** |  | 3d | 2020-11-17 | 2020-11-19 |  |  |  | 32h | 3,200 |
| 30 | 1.2.5.1 | 制定人力资源计划 | manual | 2d | 2020-11-17 | 2020-11-18 |  |  | 项目经理 | 16h | 1,600 |
| 31 | 1.2.5.2 | 制定人员配备管理计划 | manual | 2d | 2020-11-18 | 2020-11-19 |  |  | 项目经理 | 16h | 1,600 |
| 32 | 1.2.6 | **规划沟通** |  | 2d | 2020-11-19 | 2020-11-20 |  |  |  | 16h | 1,600 |
| 33 | 1.2.6.1 | 制定沟通管理计划 | manual | 2d | 2020-11-19 | 2020-11-20 |  |  | 项目经理 | 16h | 1,600 |
| 34 | 1.2.7 | **规划采购** |  | 5d | 2020-11-17 | 2020-11-22 |  |  |  | 48h | 4,800 |
| 35 | 1.2.7.1 | 自制外购分析 | manual | 2d | 2020-11-17 | 2020-11-18 |  |  | 项目经理 | 16h | 1,600 |
| 36 | 1.2.7.2 | 制定采购文件 | manual | 4d | 2020-11-18 | 2020-11-22 |  |  | 项目经理 | 32h | 3,200 |
| 37 | 1.2.8 | **规划风险** |  | 4d | 2020-11-23 | 2020-11-26 |  |  |  | 24h | 2,400 |
| 38 | 1.2.8.1 | 识别风险 | manual | 1d | 2020-11-23 | 2020-11-23 |  |  | 项目经理 | 8h | 800 |
| 39 | 1.2.8.2 | 风险分析 | manual | 1d | 2020-11-24 | 2020-11-24 | 38 |  | 项目经理 | 8h | 800 |
| 40 | 1.2.8.3 | 制定风险登记册 | manual | 1d | 2020-11-25 | 2020-11-25 | 39 |  | 项目经理 | 8h | 800 |
| 41 | 1.2.9 | 规划整合 | manual | 1d | 2020-11-26 | 2020-11-26 | 40 |  | 项目经理 | 8h | 800 |
| 42 | 1.3 | **执行与监控** |  | 21d | 2020-11-17 | 2020-12-14 |  |  | 间接成本 [0.1%] | 1200h | 102,632 |
| 43 | 1.3.1 | 组建项目团队 | manual | 3d | 2020-11-17 | 2020-11-19 |  |  | 项目经理; 测试员汪燕; 测试员梁微; 程序员申毅扬; 程序员周心羽; 程序员盛斌; 程序员杨秦晋 | 168h | 12,480 |
| 44 | 1.3.2 | **项目执行** |  | 8d | 2020-11-19 | 2020-11-30 |  |  |  | 160h | 12,800 |
| 45 | 1.3.2.1 | **首页** |  | 2d | 2020-11-19 | 2020-11-22 |  | 0d |  |  |  |
| 46 | 1.3.2.1.1 | 首页测试 | manual | 3d | 2020-11-19 | 2020-11-22 |  |  |  |  |  |
| 47 | 1.3.2.2 | **站点配置模块** |  | 3d | 2020-11-23 | 2020-11-25 |  |  |  | 96h | 7,680 |
| 48 | 1.3.2.2.1 | 站点设置 | manual | 2d | 2020-11-19 | 2020-11-20 |  |  | 程序员周心羽 | 16h | 1,280 |
| 49 | 1.3.2.2.2 | 短信设置 | manual | 2d | 2020-11-20 | 2020-11-22 |  |  | 程序员周心羽 | 16h | 1,280 |
| 50 | 1.3.2.2.3 | 邮箱设置 | manual | 4d | 2020-11-22 | 2020-11-25 |  |  | 程序员周心羽 | 32h | 2,560 |
| 51 | 1.3.2.2.4 | seo设置 | manual | 2d | 2020-11-22 | 2020-11-23 |  |  | 程序员周心羽 | 16h | 1,280 |
| 52 | 1.3.2.2.5 | 协议管理 | manual | 2d | 2020-11-24 | 2020-11-25 |  |  | 程序员周心羽 | 16h | 1,280 |

| ID | WBS | Task | Type | Duration | Start | Finish | Predecessors | Resources | Work | Cost |
| --- | --- | --- | --- | --- | --- | --- | --- | --- | --- | --- |
| 53 | 1.3.2.3 | **权限控制** |  | 3d | 2020-11-26 | 2020-11-28 |  |  | 64h | 5,120 |
| 54 | 1.3.2.3.1 | 管理员列表 | manual | 2d | 2020-11-25 | 2020-11-26 |  | 程序员盛斌 | 16h | 1,280 |
| 55 | 1.3.2.3.2 | 角色管理 | manual | 3d | 2020-11-26 | 2020-11-28 |  | 程序员盛斌 | 24h | 1,920 |
| 56 | 1.3.2.3.3 | 权限分配 | manual | 3d | 2020-11-26 | 2020-11-28 |  | 程序员盛斌 | 24h | 1,920 |
| 57 | 1.3.3 | **项目监控** |  | 8d | 2020-12-02 | 2020-12-11 |  |  | 408h | 31,520 |
| 58 | 1.3.3.1 | 各项指标监控 | manual | 2d | 2020-12-02 | 2020-12-03 |  | 测试员汪燕; 测试员梁微; 项目经理 | 48h | 3,200 |
| 59 | 1.3.3.2 | 监控评审 | manual | 2d | 2020-12-04 | 2020-12-07 | 58 | 设计专家; 项目经理; 需求专家; 质量专家 | 64h | 5,440 |
| 60 | 1.3.3.3 | 变更评审 | manual | 1d | 2020-12-08 | 2020-12-08 | 59 | 设计专家; 项目经理; 需求专家; 质量专家 | 32h | 2,720 |
| 61 | 1.3.3.4 | 变更例会 | manual | 3d | 2020-12-09 | 2020-12-11 | 43 | UI专家; 测试员汪燕; 测试员梁微; 程序员申毅扬; 程序员周心羽; 程序员盛斌; 程序员杨秦晋; 设计专家; 项目经理; 需求专家; 质量专家 | 264h | 20,160 |
| 62 | 1.3.4 | **管理干系人** |  | 1d | 2020-12-12 | 2020-12-12 |  |  | 24h | 2,400 |
| 63 | 1.3.4.1 | 发布项目信息 | manual | 1d | 2020-12-12 | 2020-12-12 | 43 | 项目经理 | 8h | 800 |
| 64 | 1.3.4.2 | 报告监控信息 | manual | 1d | 2020-12-12 | 2020-12-12 | 43 | 项目经理 | 8h | 800 |
| 65 | 1.3.4.3 | 干系人沟通 | manual | 1d | 2020-12-12 | 2020-12-12 | 43 | 项目经理 | 8h | 800 |
| 66 | 1.3.5 | **团队建设** |  | 1d | 2020-12-13 | 2020-12-14 |  |  | 440h | 33,600 |
| 67 | 1.3.5.1 | 培训 | manual | 1d | 2020-12-13 | 2020-12-13 | 43 | UI专家; 测试员汪燕; 测试员梁微; 程序员申毅扬; 程序员周心羽; 程序员盛斌; 程序员杨秦晋; 设计专家; 项目经理; 需求专家; 质量专家 | 88h | 6,720 |
| 68 | 1.3.5.2 | 娱乐活动 | manual | 2d | 2020-12-13 | 2020-12-14 | 43 | UI专家; 测试员汪燕; 测试员梁微; 程序员申毅扬; 程序员周心羽; 程序员盛斌; 程序员杨秦晋; 设计专家; 项目经理; 需求专家; 质量专家 | 176h | 13,440 |
| 69 | 1.3.5.3 | 沟通 | manual | 2d | 2020-12-13 | 2020-12-14 | 43 | UI专家; 测试员汪燕; 测试员梁微; 程序员申毅扬; 程序员周心羽; 程序员盛斌; 程序员杨秦晋; 设计专家; 项目经理; 需求专家; 质量专家 | 176h | 13,440 |
| 70 | 1.4 | 采购 | milestone, manual | 0d | 2020-12-14 | 2020-12-14 | 43 | 项目经理 |  |  |
| 71 | 1.5 | 项目验收 | manual | 1d | 2020-12-14 | 2020-12-14 | 43 | UI专家; 设计专家; 项目经理; 需求专家; 质量专家 | 40h | 3,360 |
| 72 | 1.6 | **收尾** |  | 1d | 2020-12-16 | 2020-12-16 |  | 间接成本 [0.1%] | 136h | 11,936 |
| 73 | 1.6.1 | 项目终验 | manual | 1d | 2020-12-16 | 2020-12-16 | 71 | UI专家; 设计专家; 项目经理; 需求专家; 质量专家 | 40h | 3,360 |
| 74 | 1.6.2 | 结束采购 | manual | 1d | 2020-12-16 | 2020-12-16 | 71 | 项目经理 | 8h | 800 |
| 75 | 1.6.3 | 项目内部收尾 | manual | 1d | 2020-12-16 | 2020-12-16 | 71 | UI专家; 测试员汪燕; 测试员梁微; 程序员申毅扬; 程序员周心羽; 程序员盛斌; 程序员杨秦晋; 设计专家; 项目经理; 需求专家; 质量专家 | 88h | 6,720 |
